# ShopMetrics - Desarrollo de la plataforma

Schedule from MS Project XML, 2025-01-06 to 2025-09-01, costs in US$.
ShopMetrics

## Calendars

- Estándar: Mon-Fri 09:00-13:00, 15:00-19:00; Sat-Sun off.

## Resources

| Resource | Rate |
| --- | --- |
| Arquitecto de software (free lance) | 40 |
| Desarrollador backend (free lance) | 22 |
| Desarrollador frontend (free lance) | 22 |
| Ingeniero de machine learning (free lance) | 40 |

## Schedule

| ID | WBS | Task | Duration | Start | Finish | Predecessors | Total slack | Free slack | Resources | Work | Cost |
| --- | --- | --- | --- | --- | --- | --- | --- | --- | --- | --- | --- |
| 1 | 1 | **1. Definición y arquitectura** | 19.75d | 2025-01-06 | 2025-01-31 |  | 0d |  |  | 180h | 6,840 |
| 2 | 1.1 | Relevamiento funcional y alcance del producto | 8d | 2025-01-06 | 2025-01-15 |  | 0d |  | Arquitecto de software (free lance) | 64h | 2,560 |
| 3 | 1.2 | Arquitectura de la solución y elección del stack | 7d | 2025-01-16 | 2025-01-24 | 2 | 0d |  | Arquitecto de software (free lance) | 56h | 2,240 |
| 4 | 1.3 | Modelo de datos y diccionario | 5d | 2025-01-27 | 2025-01-31 | 3 | 0d |  | Arquitecto de software (free lance); Desarrollador backend (free lance) [50%] | 60h | 2,040 |
| 5 | 2 | **2. Base de datos y cimientos** | 14.75d | 2025-02-03 | 2025-02-21 |  | 0d |  |  | 152h | 3,920 |
| 6 | 2.1 | Esquema, migraciones y series temporales | 8d | 2025-02-03 | 2025-02-12 | 4 | 0d |  | Desarrollador backend (free lance); Arquitecto de software (free lance) [50%] | 96h | 2,688 |
| 7 | 2.2 | Entorno de desarrollo y automatización de pruebas | 7d | 2025-02-13 | 2025-02-21 | 6 | 0d |  | Desarrollador backend (free lance) | 56h | 1,232 |
| 8 | 3 | **3. Integración con sistemas externos** | 29.75d | 2025-02-24 | 2025-04-04 |  | 0d |  |  | 288h | 7,200 |
| 9 | 3.1 | Conectores con puntos de venta | 12d | 2025-02-24 | 2025-03-11 | 7 | 0d |  | Desarrollador backend (free lance); Arquitecto de software (free lance) [50%] | 144h | 4,032 |
| 10 | 3.2 | Ingesta de sensores de conteo | 10d | 2025-03-12 | 2025-03-25 | 9 | 0d |  | Desarrollador backend (free lance) | 80h | 1,760 |
| 11 | 3.3 | Monitoreo de salud de las integraciones | 8d | 2025-03-26 | 2025-04-04 | 10 | 0d |  | Desarrollador backend (free lance) | 64h | 1,408 |
| 12 | 4 | **4. Motor de métricas e indicadores** | 19.75d | 2025-04-07 | 2025-05-02 |  | 0d |  |  | 208h | 5,440 |
| 13 | 4.1 | Cálculo de tráfico, conversión, ventas y vacancia | 12d | 2025-04-07 | 2025-04-22 | 11 | 0d |  | Desarrollador backend (free lance); Arquitecto de software (free lance) [50%] | 144h | 4,032 |
| 14 | 4.2 | Agregados por hora, zona y locatario | 8d | 2025-04-23 | 2025-05-02 | 13 | 10d | 0.25d | Desarrollador backend (free lance) | 64h | 1,408 |
| 15 | 5 | **5. Panel web del centro** | 27.75d | 2025-04-23 | 2025-05-30 |  | 0d |  |  | 224h | 4,928 |
| 16 | 5.1 | Sistema de diseño y navegación | 6d | 2025-04-23 | 2025-04-30 | 13 | 0d |  | Desarrollador frontend (free lance) | 48h | 1,056 |
| 17 | 5.2 | Tablero de indicadores y series | 12d | 2025-05-01 | 2025-05-16 | 16 | 0d |  | Desarrollador frontend (free lance) | 96h | 2,112 |
| 18 | 5.3 | Mapa del centro y ficha de locatarios | 10d | 2025-05-19 | 2025-05-30 | 17 | 0d |  | Desarrollador frontend (free lance) | 80h | 1,760 |
| 19 | 6 | **6. Motor de reglas y alertas** | 29.75d | 2025-05-05 | 2025-06-13 |  | 10d |  |  | 240h | 6,000 |
| 20 | 6.1 | Definición y evaluación de reglas por umbral | 10d | 2025-05-05 | 2025-05-16 | 14 | 10d | 0.25d | Desarrollador backend (free lance); Arquitecto de software (free lance) [50%] | 120h | 3,360 |
| 21 | 6.2 | Canales de notificación | 5d | 2025-05-19 | 2025-05-23 | 20 | 27d | 0.25d | Desarrollador backend (free lance) | 40h | 880 |
| 22 | 6.3 | Centro de alertas y ciclo de atención | 10d | 2025-06-02 | 2025-06-13 | 18, 20 | 0d |  | Desarrollador frontend (free lance) | 80h | 1,760 |
| 23 | 7 | **7. Modelos de Machine Learning** | 29.75d | 2025-05-05 | 2025-06-13 |  | 27d |  |  | 240h | 9,600 |
| 24 | 7.1 | Predicción de riesgo de vacancia | 10d | 2025-05-05 | 2025-05-16 | 14 | 27d | 0.25d | Ingeniero de machine learning (free lance) | 80h | 3,200 |
| 25 | 7.2 | Recomendación de mix de locatarios | 8d | 2025-05-19 | 2025-05-28 | 24 | 27d | 0.25d | Ingeniero de machine learning (free lance) | 64h | 2,560 |
| 26 | 7.3 | Detección de anomalías en la operación | 12d | 2025-05-29 | 2025-06-13 | 25 | 27d | 0.25d | Ingeniero de machine learning (free lance) | 96h | 3,840 |

| ID | WBS | Task | Type | Duration | Start | Finish | Predecessors | Total slack | Free slack | Resources | Work | Cost |
| --- | --- | --- | --- | --- | --- | --- | --- | --- | --- | --- | --- | --- |
| 27 | 8 | **8. Portal del locatario** |  | 16.75d | 2025-06-16 | 2025-07-08 |  | 0d |  |  | 136h | 2,992 |
| 28 | 8.1 | Tablero del local y comparación con la categoría |  | 12d | 2025-06-16 | 2025-07-01 | 22 | 0d |  | Desarrollador frontend (free lance) | 96h | 2,112 |
| 29 | 8.2 | Consentimiento sobre el uso de datos |  | 5d | 2025-07-02 | 2025-07-08 | 28 | 0d |  | Desarrollador frontend (free lance) | 40h | 880 |
| 30 | 9 | **9. Vista móvil de operaciones** |  | 15.75d | 2025-07-09 | 2025-07-30 |  | 0d |  |  | 128h | 2,816 |
| 31 | 9.1 | Resolución de alertas en terreno |  | 10d | 2025-07-09 | 2025-07-22 | 29 | 0d |  | Desarrollador frontend (free lance) | 80h | 1,760 |
| 32 | 9.2 | Historial de turno del operario |  | 6d | 2025-07-23 | 2025-07-30 | 31 | 0d |  | Desarrollador frontend (free lance) | 48h | 1,056 |
| 33 | 10 | **10. Seguridad, permisos y auditoría** |  | 14.75d | 2025-05-26 | 2025-06-13 |  | 27d |  |  | 152h | 3,920 |
| 34 | 10.1 | Autenticación y matriz de permisos |  | 8d | 2025-05-26 | 2025-06-04 | 21 | 27d | 0.25d | Desarrollador backend (free lance); Arquitecto de software (free lance) [50%] | 96h | 2,688 |
| 35 | 10.2 | Auditoría de accesos a datos sensibles |  | 7d | 2025-06-05 | 2025-06-13 | 34 | 27d | 0.25d | Desarrollador backend (free lance) | 56h | 1,232 |
| 36 | 11 | **11. Pruebas y salida a producción** |  | 55.75d | 2025-06-16 | 2025-09-01 |  | 0d |  |  | 376h | 11,224 |
| 37 | 11.1 | Integración de los modelos de ML en el panel y las alertas |  | 6d | 2025-06-16 | 2025-06-23 | 35, 26 | 27d |  | Desarrollador backend (free lance) | 48h | 1,056 |
| 38 | 11.2 | Pruebas integrales y corrección |  | 12d | 2025-07-31 | 2025-08-15 | 37, 32 | 0d |  | Arquitecto de software (free lance); Desarrollador backend (free lance) [50%]; Desarrollador frontend (free lance) [50%] | 192h | 5,952 |
| 39 | 11.3 | Documentación y manual de uso |  | 5d | 2025-08-18 | 2025-08-22 | 38 | 0d |  | Arquitecto de software (free lance) [50%]; Desarrollador backend (free lance) [50%] | 40h | 1,240 |
| 40 | 11.4 | Despliegue y puesta en marcha |  | 6d | 2025-08-25 | 2025-09-01 | 39 | 0d |  | Arquitecto de software (free lance); Desarrollador backend (free lance) | 96h | 2,976 |
| 41 | 12 | Plataforma lista para salir al mercado | milestone | 0d | 2025-09-01 | 2025-09-01 | 40 | 0d |  |  |  |  |
